# wbs proyecto orfeo caprecom

Schedule from MS Project, 2014-07-17 to 2014-12-17.

## Calendars

- Standard: Mon-Fri 08:00-12:00, 13:00-17:00; Sat-Sun off.

## Schedule

| ID | WBS | Task | Type | Duration | Start | Finish | Predecessors | Total slack | Free slack | Constraint |
| --- | --- | --- | --- | --- | --- | --- | --- | --- | --- | --- |
| 1 | 1 | **Orfeo Caprecom** |  | 110d | 2014-07-17 | 2014-12-17 |  | 0d |  | start no earlier than 2014-07-17 |
| 2 | 1.1 | Inicio de proyecto | milestone | 0d | 2014-07-17 | 2014-07-17 |  | 110d |  |  |
| 3 | 1.2 | **Plan de trabajo** |  | 8d | 2014-07-17 | 2014-07-28 |  | 102d |  |  |
| 4 | 1.2.1 | **Alcance** |  | 5d | 2014-07-17 | 2014-07-23 | 2 | 102d |  |  |
| 5 | 1.2.1.1 | Construir listado de entregables |  | 2d | 2014-07-17 | 2014-07-18 |  | 102d | 0d |  |
| 6 | 1.2.1.2 | Construir WBS |  | 3d | 2014-07-21 | 2014-07-23 | 5 | 102d | 0d |  |
| 7 | 1.2.1.3 | Construir diccionario WBS |  | 3d | 2014-07-21 | 2014-07-23 | 5 | 105d |  |  |
| 8 | 1.2.2 | **Cronograma** |  | 3d | 2014-07-24 | 2014-07-28 |  | 102d |  |  |
| 9 | 1.2.2.1 | Identificar tareas |  | 2d | 2014-07-24 | 2014-07-25 | 6 | 103d |  |  |
| 10 | 1.2.2.2 | Identificar recursos |  | 3d | 2014-07-24 | 2014-07-28 | 6 | 102d |  |  |
| 11 | 1.2.2.3 | Identificar precedencias |  | 1d | 2014-07-24 | 2014-07-24 | 6 | 104d |  |  |
| 12 | 1.2.2.4 | Estimar duraciones |  | 3d | 2014-07-24 | 2014-07-28 | 6 | 102d |  |  |
| 13 | 1.2.3 | **Riesgos** |  | 5d | 2014-07-17 | 2014-07-23 |  | 105d |  |  |
| 14 | 1.2.3.1 | Construir registro de riesgos |  | 2d | 2014-07-17 | 2014-07-18 |  | 108d |  |  |
| 15 | 1.2.3.2 | Valorar riesgos |  | 5d | 2014-07-17 | 2014-07-23 |  | 105d |  |  |
| 16 | 1.2.4 | **Comunicaciones** |  | 5d | 2014-07-17 | 2014-07-23 |  | 105d |  |  |
| 17 | 1.2.4.1 | Identificar los receptores |  | 1d | 2014-07-17 | 2014-07-17 |  | 109d |  |  |
| 18 | 1.2.4.2 | Identificar los emisores |  | 1d | 2014-07-17 | 2014-07-17 |  | 109d |  |  |
| 19 | 1.2.4.3 | Identificar los mensajes |  | 2d | 2014-07-17 | 2014-07-18 |  | 105d | 0d |  |
| 20 | 1.2.4.4 | Definir la matriz de comunicaciones |  | 3d | 2014-07-21 | 2014-07-23 | 19 | 105d |  |  |
| 21 | 1.2.5 | **Calidad** |  | 6d | 2014-07-17 | 2014-07-24 |  | 104d |  |  |
| 22 | 1.2.5.1 | Identificar los estándares de calidad |  | 3d | 2014-07-17 | 2014-07-21 |  | 104d | 0d |  |
| 23 | 1.2.5.2 | Identificar cómo se miden los estándares de calidad |  | 3d | 2014-07-22 | 2014-07-24 | 22 | 104d |  |  |
| 24 | 1.3 | **Actualización sistema** |  | 39d | 2014-07-17 | 2014-09-09 |  | 68d |  |  |
| 25 | 1.3.1 | **Instalación Orfeo** |  | 7d | 2014-07-17 | 2014-07-25 | 2 | 68d | 0d |  |
| 26 | 1.3.1.1 | Instalar motor BDD |  | 1d | 2014-07-17 | 2014-07-17 |  | 74d |  |  |
| 27 | 1.3.1.2 | Instalar servidor web |  | 1d | 2014-07-17 | 2014-07-17 |  | 68d | 0d |  |
| 28 | 1.3.1.3 | Instalar servidor aplicaciones |  | 2d | 2014-07-18 | 2014-07-21 | 27 | 72d |  |  |
| 29 | 1.3.1.4 | Instalar repositorio JackRabbit |  | 3d | 2014-07-18 | 2014-07-22 | 27 | 68d | 0d |  |

| ID | WBS | Task | Duration | Start | Finish | Predecessors | Total slack | Free slack |
| --- | --- | --- | --- | --- | --- | --- | --- | --- |
| 30 | 1.3.1.5 | **Instalar y configurar combinador** | 3d | 2014-07-23 | 2014-07-25 | 29 | 68d |  |
| 31 | 1.3.1.5.1 | Identificar parámetros de configuración | 1d | 2014-07-23 | 2014-07-23 |  | 68d | 0d |
| 32 | 1.3.1.5.2 | Instalar combinador | 2d | 2014-07-24 | 2014-07-25 | 31 | 68d |  |
| 33 | 1.3.1.6 | Instalar digitalizador | 2d | 2014-07-23 | 2014-07-24 | 29 | 69d |  |
| 34 | 1.3.1.7 | Instalar fax server | 1d | 2014-07-18 | 2014-07-18 | 27 | 73d | 5d |
| 35 | 1.3.2 | **Afinación infraestructura** | 8d | 2014-07-28 | 2014-08-06 | 34 | 81d | 0d |
| 36 | 1.3.2.1 | **Afinación postgresql** | 3d | 2014-07-28 | 2014-07-30 |  | 81d |  |
| 37 | 1.3.2.1.1 | Diagnosticar necesidad de afinación DB | 2d | 2014-07-28 | 2014-07-29 | 25 | 81d | 0d |
| 38 | 1.3.2.1.2 | Definir e implementar parámetros de afinación DB | 1d | 2014-07-30 | 2014-07-30 | 37 | 81d | 0d |
| 39 | 1.3.2.2 | **Afinación servidor web** | 3d | 2014-07-31 | 2014-08-04 |  | 83d |  |
| 40 | 1.3.2.2.1 | Diagnosticar necesidad de afinación Servidor Web | 2d | 2014-07-31 | 2014-08-01 | 38 | 83d | 0d |
| 41 | 1.3.2.2.2 | Definir e implementar parámetros de afinación Servidor Web | 1d | 2014-08-04 | 2014-08-04 | 40 | 83d |  |
| 42 | 1.3.2.3 | **Afinación servidor aplicaciones** | 3d | 2014-07-31 | 2014-08-04 |  | 83d |  |
| 43 | 1.3.2.3.1 | Diagnosticar necesidad de afinación Servidor Aplicaciones | 2d | 2014-07-31 | 2014-08-01 | 38 | 83d | 0d |
| 44 | 1.3.2.3.2 | Definir e implementar parámetros de afinación Servidor Aplicaciones | 1d | 2014-08-04 | 2014-08-04 | 43 | 83d |  |
| 45 | 1.3.2.4 | **Afinación sistema operativo** | 5d | 2014-07-31 | 2014-08-06 |  | 81d |  |
| 46 | 1.3.2.4.1 | Diagnosticar necesidad de afinación sistema operativo | 3d | 2014-07-31 | 2014-08-04 | 38 | 81d | 0d |
| 47 | 1.3.2.4.2 | Definir e implantar parámetros de afinación sistema operativo | 2d | 2014-08-05 | 2014-08-06 | 46 | 81d |  |
| 48 | 1.3.3 | Revisar funcionalidad | 5d | 2014-07-28 | 2014-08-01 | 25 | 68d | 0d |
| 49 | 1.3.4 | Efectuar actualizaciones al software | 30d | 2014-07-30 | 2014-09-09 | 48SS+2d | 68d | 0d |
| 50 | 1.3.5 | **Precisar tablas de inicialización** | 23d | 2014-07-17 | 2014-08-18 |  | 87d |  |
| 51 | 1.3.5.1 | **Lista de dependencias** | 10d | 2014-07-17 | 2014-07-30 |  | 100d |  |
| 52 | 1.3.5.1.1 | Identificar lista de dependencias | 1d | 2014-07-17 | 2014-07-17 |  | 106d | 0d |
| 53 | 1.3.5.1.2 | Actualizar lista de dependencias | 2d | 2014-07-28 | 2014-07-29 | 25 | 100d | 0d |
| 54 | 1.3.5.1.3 | Identificar jefe de la dependencia | 1d | 2014-07-30 | 2014-07-30 | 53 | 100d |  |

| ID | WBS | Task | Duration | Start | Finish | Predecessors | Total slack | Free slack |
| --- | --- | --- | --- | --- | --- | --- | --- | --- |
| 55 | 1.3.5.2 | **Roles** | 3d | 2014-07-28 | 2014-07-30 |  | 96d |  |
| 56 | 1.3.5.2.1 | Identificar funcionalidades del sistema | 1d | 2014-07-28 | 2014-07-28 | 25 | 96d | 0d |
| 57 | 1.3.5.2.2 | Identificar roles que ejecutan funcionalidades | 2d | 2014-07-29 | 2014-07-30 | 56 | 96d | 0d |
| 58 | 1.3.5.3 | **Tablas de retención** | 16d | 2014-07-28 | 2014-08-18 |  | 82d | 0d |
| 59 | 1.3.5.3.1 | Identificar TRD existentes | 1d | 2014-07-28 | 2014-07-28 | 25 | 82d | 0d |
| 60 | 1.3.5.3.2 | Revisar cada TRD | 15d | 2014-07-29 | 2014-08-18 | 59 | 82d |  |
| 61 | 1.3.5.3.3 | Identificar roles con acceso a los documentos de la TRD | 2d | 2014-07-29 | 2014-07-30 | 59 | 95d |  |
| 62 | 1.3.5.4 | **Permisos** | 4d | 2014-07-31 | 2014-08-05 |  | 96d |  |
| 63 | 1.3.5.4.1 | Definir permisos de ejecucion para cada funcionalidad | 2d | 2014-07-31 | 2014-08-01 | 57 | 96d | 0d |
| 64 | 1.3.5.4.2 | Definir grupos de objetos | 1d | 2014-08-04 | 2014-08-04 | 63 | 96d | 0d |
| 65 | 1.3.5.4.3 | Definir permisos de acceso a cada grupo de objetos | 1d | 2014-08-05 | 2014-08-05 | 64 | 96d |  |
| 66 | 1.3.5.5 | **Usuarios** | 5d | 2014-07-28 | 2014-08-01 |  | 98d |  |
| 67 | 1.3.5.5.1 | Construir lista actual de usuarios | 1d | 2014-07-28 | 2014-07-28 | 25 | 98d | 0d |
| 68 | 1.3.5.5.2 | Verificar lista actual de usuarios | 4d | 2014-07-29 | 2014-08-01 | 67 | 98d |  |
| 69 | 1.3.5.5.3 | Definir roles para cada usuario | 4d | 2014-07-29 | 2014-08-01 | 67 | 98d |  |
| 70 | 1.3.6 | **Autenticación** | 5d | 2014-07-28 | 2014-08-01 |  | 98d |  |
| 71 | 1.3.6.1 | Identificar el realm para autenticación | 2d | 2014-07-28 | 2014-07-29 | 25 | 98d | 0d |
| 72 | 1.3.6.2 | Integrar login con Active Directory | 3d | 2014-07-30 | 2014-08-01 | 71 | 98d |  |
| 73 | 1.3.7 | **Estadísticas** | 21d | 2014-07-28 | 2014-08-25 |  | 82d |  |
| 74 | 1.3.7.1 | Definir 5 reportes estadísticos | 5d | 2014-07-28 | 2014-08-01 | 25 | 82d | 0d |
| 75 | 1.3.7.2 | Programar 5 reportes estadísticos | 20d | 2014-07-29 | 2014-08-25 | 74SS+1d | 82d |  |
| 76 | 1.4 | **Pruebas del sistema** | 25d | 2014-08-01 | 2014-09-04 | 49SS+2d | 68d |  |
| 77 | 1.4.1 | **Pruebas funcionales** | 21d | 2014-08-01 | 2014-08-29 |  | 68d | 0d |
| 78 | 1.4.1.1 | Definir pruebas funcionales | 10d | 2014-08-01 | 2014-08-14 |  | 79d |  |
| 79 | 1.4.1.2 | Construir programas de prueba funcional | 20d | 2014-08-01 | 2014-08-28 |  | 68d | 0d |
| 80 | 1.4.1.3 | Ejecutar pruebas funcionales | 20d | 2014-08-04 | 2014-08-29 | 79SS+1d | 68d |  |

| ID | WBS | Task | Type | Duration | Start | Finish | Predecessors | Total slack | Free slack |
| --- | --- | --- | --- | --- | --- | --- | --- | --- | --- |
| 81 | 1.4.2 | **Pruebas de integración** |  | 21d | 2014-08-01 | 2014-08-29 |  | 74d | 0d |
| 82 | 1.4.2.1 | Definir pruebas de integración |  | 10d | 2014-08-01 | 2014-08-14 |  | 85d |  |
| 83 | 1.4.2.2 | Construir programas de prueba integral |  | 20d | 2014-08-01 | 2014-08-28 |  | 74d | 0d |
| 84 | 1.4.2.3 | Ejecutar pruebas de integración |  | 20d | 2014-08-04 | 2014-08-29 | 83SS+1d | 74d |  |
| 85 | 1.4.3 | **Pruebas de carga** |  | 6d | 2014-08-01 | 2014-08-08 |  | 93d |  |
| 86 | 1.4.3.1 | Construir programas para prueba de carga |  | 5d | 2014-08-01 | 2014-08-07 |  | 93d | 0d |
| 87 | 1.4.3.2 | Ejecutar programas de prueba de carga |  | 1d | 2014-08-08 | 2014-08-08 | 86 | 93d |  |
| 88 | 1.4.4 | **Compatibilidad navegadores** |  | 4d | 2014-09-01 | 2014-09-04 |  | 74d |  |
| 89 | 1.4.4.1 | Probar compatibilidad IE8 |  | 2d | 2014-09-01 | 2014-09-02 | 81 | 74d | 0d |
| 90 | 1.4.4.2 | Probar compatibilidad Chrome 18.0 |  | 2d | 2014-09-03 | 2014-09-04 | 89 | 74d |  |
| 91 | 1.5 | **Entrenamiento usuarios** |  | 42d | 2014-07-17 | 2014-09-12 |  | 68d | 0d |
| 92 | 1.5.1 | **Definir Plan de capacitación** |  | 22d | 2014-07-17 | 2014-08-15 |  | 68d | 0d |
| 93 | 1.5.1.1 | Definir contenidos de capacitación |  | 5d | 2014-07-17 | 2014-07-23 |  | 68d | 0d |
| 94 | 1.5.1.2 | Elaborar material audiovisual |  | 20d | 2014-07-21 | 2014-08-15 | 93SS+2d | 68d |  |
| 95 | 1.5.1.3 | Construir base de datos de prueba |  | 20d | 2014-07-21 | 2014-08-15 | 93SS+2d | 68d |  |
| 96 | 1.5.1.4 | Definir sesiones de entrenamiento |  | 2d | 2014-07-24 | 2014-07-25 | 93 | 83d |  |
| 97 | 1.5.2 | **Ejecutar plan de capacitación** |  | 20d | 2014-08-18 | 2014-09-12 |  | 68d |  |
| 98 | 1.5.2.1 | Entrenar ingenieros |  | 5d | 2014-08-18 | 2014-08-22 | 92 | 83d |  |
| 99 | 1.5.2.2 | Entrenar soporte nivel 1 y 2 |  | 5d | 2014-08-18 | 2014-08-22 | 92 | 83d |  |
| 100 | 1.5.2.3 | Entrenar usuarios gestión documental |  | 20d | 2014-08-18 | 2014-09-12 | 92 | 68d |  |
| 101 | 1.5.2.4 | Entrenar usuarios finales |  | 20d | 2014-08-18 | 2014-09-12 | 92 | 68d |  |
| 102 | 1.6 | **Puesta en funcionamiento** |  | 30d | 2014-07-17 | 2014-08-27 |  | 0d |  |
| 103 | 1.6.1 | **Preparar puesta en funcionamiento** |  | 30d | 2014-07-17 | 2014-08-27 |  | 0d |  |
| 104 | 1.6.1.1 | Precisar lista usuarios con sus roles y permisos |  | 5d | 2014-07-17 | 2014-07-23 | 91SS | 25d | 0d |
| 105 | 1.6.1.2 | Definir plan puesta en funcionamiento cada territorial |  | 2d | 2014-07-17 | 2014-07-18 | 91SS | 28d |  |
| 106 | 1.6.1.3 | Ejecutar plan comunicaciones puesta en funcionamiento |  | 30d | 2014-07-17 | 2014-08-27 |  | 0d |  |
| 107 | 1.6.2 | Ejecutar puesta en funcionamiento | milestone | 0d | 2014-08-27 | 2014-08-27 | 103 | 0d |  |

| ID | WBS | Task | Type | Duration | Start | Finish | Predecessors | Total slack | Free slack |
| --- | --- | --- | --- | --- | --- | --- | --- | --- | --- |
| 108 | 1.7 | **Soporte** |  | 80d | 2014-08-28 | 2014-12-17 |  | 0d |  |
| 109 | 1.7.1 | Proveer soporte funcional |  | 80d | 2014-08-28 | 2014-12-17 | 107 | 0d |  |
| 110 | 1.7.2 | Proveer soporte técnico |  | 80d | 2014-08-28 | 2014-12-17 | 107 | 0d |  |
| 111 | 1.7.3 | Proveer soporte 3er nivel |  | 80d | 2014-08-28 | 2014-12-17 | 107 | 0d |  |
| 112 | 1.8 | **Documentación** |  | 27d | 2014-07-18 | 2014-08-25 |  | 82d |  |
| 113 | 1.8.1 | Documentar configuración software |  | 4d | 2014-08-07 | 2014-08-12 | 35 | 81d | 0d |
| 114 | 1.8.2 | Documentar parametrización dependencias |  | 3d | 2014-07-18 | 2014-07-22 | 52 | 106d |  |
| 115 | 1.8.3 | Documentar parametrización TRD |  | 5d | 2014-08-19 | 2014-08-25 | 58 | 82d |  |
| 116 | 1.8.4 | Documentar parametrización roles |  | 4d | 2014-07-24 | 2014-07-29 | 104 | 101d |  |
| 117 | 1.8.5 | Documentar parametrización usuarios |  | 4d | 2014-07-24 | 2014-07-29 | 104 | 101d |  |
| 118 | 1.8.6 | Documentar afinación componentes |  | 4d | 2014-08-07 | 2014-08-12 | 35 | 91d |  |
| 119 | 1.8.7 | Preparar materiales de capacitación |  | 20d | 2014-07-24 | 2014-08-20 | 93 | 85d |  |
| 120 | 1.9 | **Manuales** |  | 23d | 2014-08-13 | 2014-09-12 |  | 68d |  |
| 121 | 1.9.1 | Construir manual de instalación |  | 10d | 2014-08-13 | 2014-08-26 | 113 | 81d |  |
| 122 | 1.9.2 | Construir manual de usuario |  | 10d | 2014-09-01 | 2014-09-12 | 77 | 68d |  |
| 123 | 1.9.3 | Construir manual de administración |  | 5d | 2014-08-13 | 2014-08-19 | 113 | 86d |  |
| 124 | 1.9.4 | Construir manual técnico |  | 5d | 2014-08-13 | 2014-08-19 | 113 | 86d |  |
| 125 | 1.10 | Fin de proyecto | milestone | 0d | 2014-12-17 | 2014-12-17 | 108 | 0d |  |
